# DFS人力资源系统重构项目

Schedule from a web Gantt chart, 2024-07-01 to 2026-06-30.
Saturdays and Sundays are off

## Schedule

| ID | WBS | Task | Type | Duration | Start | Finish | Complete | inPeople |
| --- | --- | --- | --- | --- | --- | --- | --- | --- |
| 2 | 1 | **项目商务阶段** |  | 23d | 2024-07-01 | 2024-07-31 |  |  |
| 3 | 1.1 | 技术协议书编写 |  | 5d | 2024-07-01 | 2024-07-05 |  | 陶智、顾恒琪 |
| 4 | 1.2 | 合同签署确认 | fixed end | 23d | 2024-07-01 | 2024-07-31 |  | 联友、盖雅 |
| 5 | 2 | **项目准备阶段** |  | 20d | 2024-07-01 | 2024-07-26 | 15% |  |
| 6 | 2.1 | **建立项目组工作环境** |  | 3d | 2024-07-01 | 2024-07-03 | 100% |  |
| 7 | 2.1.1 | 办公室和会议室 |  | 1d | 2024-07-01 | 2024-07-01 | 100% | 陶智 |
| 8 | 2.1.2 | 门禁、网络、通讯工具、饭卡、SVN |  | 3d | 2024-07-01 | 2024-07-03 | 100% | 陶智 |
| 9 | 2.1.3 | 其他办公设备和后勤保障（打印等） |  | 3d | 2024-07-01 | 2024-07-03 | 100% | 陶智 |
| 10 | 2.2 | **确定项目组机构** |  | 20d | 2024-07-01 | 2024-07-26 |  |  |
| 11 | 2.2.1 | 东风南方项目组织架构搭建 |  | 5d | 2024-07-01 | 2024-07-05 |  | 丁敏、顾恒琪 |
| 12 | 2.2.2 | 盖雅项目组织架构搭建 |  | 5d | 2024-07-01 | 2024-07-05 |  | 丁敏、顾恒琪 |
| 13 | 2.2.3 | 东风南方项目组成员和关键用户确认 |  | 15d | 2024-07-08 | 2024-07-26 |  | 丁敏、顾恒琪 |
| 14 | 2.2.4 | 盖雅项目组成员确认 |  | 15d | 2024-07-08 | 2024-07-26 |  | 丁敏、顾恒琪 |
| 15 | 3 | **业务调研阶段** |  | 51d | 2024-07-05 | 2024-09-13 |  |  |
| 16 | 3.1 | **业务现状初步沟通** |  | 16d | 2024-07-05 | 2024-07-26 |  |  |
| 17 | 3.1.1 | 现状问卷准备 |  | 3d | 2024-07-05 | 2024-07-09 |  | 顾恒琪、熊江红 |
| 18 | 3.1.2 | **集团现状业务沟通（含总部7个部门）** |  | 3d | 2024-07-10 | 2024-07-12 |  | 顾恒琪、熊江红 |
| 19 | 3.1.2.1 | 财务部 |  | 1d | 2024-07-10 | 2024-07-10 |  |  |
| 20 | 3.1.2.2 | 办公室 |  | 1d | 2024-07-10 | 2024-07-10 |  |  |
| 21 | 3.1.2.3 | 经营规划部 |  | 1d | 2024-07-11 | 2024-07-11 |  |  |
| 22 | 3.1.2.4 | 汽车营销事业部 |  | 1d | 2024-07-11 | 2024-07-11 |  |  |
| 23 | 3.1.2.5 | 党群工作部 |  | 1d | 2024-07-12 | 2024-07-12 |  |  |
| 24 | 3.1.2.6 | 纪检监察部 |  | 1d | 2024-07-12 | 2024-07-12 |  |  |
| 25 | 3.1.2.7 | 人力资源部 |  | 1d | 2024-07-12 | 2024-07-12 |  |  |

| ID | WBS | Task | Duration | Start | Finish | Predecessors | inPeople | Status |
| --- | --- | --- | --- | --- | --- | --- | --- | --- |
| 26 | 3.1.3 | **重点二级单位现状业务沟通** | 5d | 2024-07-15 | 2024-07-19 |  | 顾恒琪、熊江红 |  |
| 27 | 3.1.3.1 | 广州实业 | 1d | 2024-07-15 | 2024-07-15 |  |  |  |
| 28 | 3.1.3.2 | 锦上技研 | 1d | 2024-07-16 | 2024-07-16 |  |  |  |
| 29 | 3.1.3.3 | 联友出行 | 1d | 2024-07-17 | 2024-07-17 |  |  |  |
| 30 | 3.1.3.4 | 数据公司 | 1d | 2024-07-18 | 2024-07-18 |  |  |  |
| 31 | 3.1.3.5 | 联友科技 | 1d | 2024-07-19 | 2024-07-19 |  |  |  |
| 32 | 3.1.3.6 | 营销板块典型单位 | 1d | 2024-07-19 | 2024-07-19 |  |  |  |
| 33 | 3.1.4 | 集团现状业务沟通结果分析 | 5d | 2024-07-22 | 2024-07-26 |  | 顾恒琪、熊江红 |  |
| 34 | 3.2 | **业务需求调研** | 35d | 2024-07-29 | 2024-09-13 |  |  |  |
| 35 | 3.2.1 | 调研问卷准备 | 15d | 2024-07-29 | 2024-08-16 | 33 | 熊江红 | waiting |
| 36 | 3.2.2 | 调研问卷下发 | 1d | 2024-08-19 | 2024-08-19 |  | 熊江红 | waiting |
| 37 | 3.2.3 | 调研问卷回收 | 2d | 2024-08-20 | 2024-08-21 | 36 | 熊江红 | waiting |
| 38 | 3.2.4 | 调研问卷分析 | 2d | 2024-08-22 | 2024-08-23 | 37 | 熊江红 | waiting |
| 39 | 3.2.5 | 二级单位访谈 | 15d | 2024-08-26 | 2024-09-13 | 38 | 熊江红 | waiting |
| 40 | 3.3 | **数据标准调研** | 30d | 2024-07-22 | 2024-08-30 |  |  |  |
| 41 | 3.3.1 | 制作数据字典收集模板 | 5d | 2024-07-22 | 2024-07-26 |  | 徐辉 |  |
| 42 | 3.3.2 | 数据字典收集模板下发 | 1d | 2024-07-29 | 2024-07-29 | 41 | 顾恒琪 | waiting |
| 43 | 3.3.3 | 数据字典回收 | 4d | 2024-07-30 | 2024-08-02 | 42 | 顾恒琪 | waiting |
| 44 | 3.3.4 | 组织用户统一平台访谈 | 5d | 2024-08-12 | 2024-08-16 |  | 顾恒琪 |  |
| 45 | 3.3.5 | 其他关联系统访谈 | 10d | 2024-08-19 | 2024-08-30 | 44 | 顾恒琪 | waiting |
| 46 | 4 | **系统蓝图阶段** | 105d | 2024-07-08 | 2024-11-29 |  |  |  |
| 47 | 4.1 | **硬件环境准备** | 50d | 2024-07-08 | 2024-09-13 |  |  |  |
| 48 | 4.1.1 | 定义环境需求 | 5d | 2024-07-08 | 2024-07-12 |  | 顾恒琪、顾浩 |  |
| 49 | 4.1.2 | 定义和分配团队系统访问权限 | 5d | 2024-07-08 | 2024-07-12 |  | 顾恒琪、顾浩 |  |
| 50 | 4.1.3 | 定义技术标准和流程 | 5d | 2024-07-08 | 2024-07-12 |  | 顾恒琪、顾浩 |  |
| 51 | 4.1.4 | 硬件蓝图设计文档编写 | 5d | 2024-07-08 | 2024-07-12 |  | 顾恒琪、顾浩 |  |
| 52 | 4.1.5 | 硬件环境准备 | 5d | 2024-08-26 | 2024-08-30 |  | 联友 |  |
| 53 | 4.1.6 | 测试、生产环境系统安装和部署 | 10d | 2024-09-02 | 2024-09-13 |  | 顾浩 |  |

| ID | WBS | Task | Type | Duration | Start | Finish | Predecessors | Status |
| --- | --- | --- | --- | --- | --- | --- | --- | --- |
| 54 | 4.2 | **系统标准功能搭建** |  | 30d | 2024-09-16 | 2024-10-25 | 53 | waiting |
| 55 | 4.2.1 | 开发环境配置 |  | 10d | 2024-09-16 | 2024-09-27 |  | waiting |
| 56 | 4.2.2 | 测试环境配置 |  | 10d | 2024-09-30 | 2024-10-11 | 55 | waiting |
| 57 | 4.2.3 | 生产环境配置 |  | 5d | 2024-10-14 | 2024-10-18 | 56 | waiting |
| 58 | 4.2.4 | 环境功能验证 |  | 5d | 2024-10-21 | 2024-10-25 | 57 | waiting |
| 59 | 4.3 | 组织人事业务咨询 |  | 25d | 2024-09-16 | 2024-10-18 | 39 | waiting |
| 60 | 4.4 | **数据标准梳理** |  | 25d | 2024-08-19 | 2024-09-20 | 44 | waiting |
| 61 | 4.4.1 | 数据标准制定 |  | 15d | 2024-08-19 | 2024-09-06 |  | waiting |
| 62 | 4.4.2 | 数据标准确认和调整 |  | 10d | 2024-09-09 | 2024-09-20 | 61 | waiting |
| 63 | 4.4.3 | 数据收集模板制作 |  | 5d | 2024-09-16 | 2024-09-20 |  | waiting |
| 64 | 4.5 | **系统蓝图设计和确认** |  | 20d | 2024-10-21 | 2024-11-15 | 59 | waiting |
| 65 | 4.5.1 | 蓝图设计 |  | 10d | 2024-10-21 | 2024-11-01 |  | waiting |
| 66 | 4.5.2 | 蓝图确认及调整 |  | 10d | 2024-11-04 | 2024-11-15 | 65 | waiting |
| 67 | 4.6 | **数据收集** |  | 15d | 2024-09-23 | 2024-10-11 | 62 | waiting |
| 68 | 4.6.1 | 数据收集模板下发 |  | 1d | 2024-09-23 | 2024-09-23 | 63 | waiting |
| 69 | 4.6.2 | 数据回收和校验 |  | 14d | 2024-09-24 | 2024-10-11 | 68 | waiting |
| 70 | 4.7 | 数据清洗转换和导入 |  | 20d | 2024-10-28 | 2024-11-22 | 54 | waiting |
| 71 | 4.8 | 系统标准功能培训 |  | 4d | 2024-11-25 | 2024-11-28 |  |  |
| 72 | 4.9 | 系统切换 | fixed end | 1d | 2024-11-29 | 2024-11-29 | 71 | waiting |
| 73 | 5 | 系统实施阶段 |  | 130d | 2024-11-25 | 2025-05-23 | 70 | waiting |
| 74 | 6 | 系统上线阶段 | fixed end | 21d | 2025-06-02 | 2025-06-30 |  |  |
| 75 | 7 | 上线支持阶段 |  | 261d | 2025-07-01 | 2026-06-30 |  |  |
